# DC module

Schedule from a web Gantt chart, 2026-08-19 to 2026-11-13.
Every day is a working day

## Schedule

| ID | WBS | Task | Type | Duration | Start | Finish | Complete | Status |
| --- | --- | --- | --- | --- | --- | --- | --- | --- |
| 2 | 1 | **0. SDV rework** | fixed start, fixed end | 20d | 2026-08-19 | 2026-09-07 | 41% |  |
| 3 | 1.1 | Plan A: 增加锡重新回流 |  | 1d | 2026-08-19 | 2026-08-19 | 100% | failed |
| 4 | 1.2 | Plan B：小锡炉返修 |  | 1d | 2026-08-19 | 2026-08-19 | 100% | failed |
| 5 | 1.3 | **Plan C: 波峰焊返修** |  | 14d | 2026-08-25 | 2026-09-07 | 22% |  |
| 6 | 1.3.1 | 波峰焊治具到达 |  | 1d | 2026-08-25 | 2026-08-25 | 100% | done |
| 7 | 1.3.2 | 验证&返修 |  | 3d | 2026-08-25 | 2026-08-27 | 10% |  |
| 8 | 1.3.3 | 出货 |  | 2d | 2026-09-06 | 2026-09-07 |  |  |
| 9 | 2 | **1. SDV-SIT DC module soldering study** | fixed start, fixed end | 81d | 2026-08-25 | 2026-11-13 |  |  |
| 10 | 2.1 | **Plan A: 波峰焊验证** | fixed start, fixed end | 50d | 2026-09-03 | 2026-10-22 |  |  |
| 11 | 2.1.1 | A.1 PCB/电解电容/DCmodule物资调拨 |  | 1d | 2026-09-15 | 2026-09-15 |  |  |
| 12 | 2.1.2 | A.1 锡条、无卤助焊剂调拨 |  | 50d | 2026-09-03 | 2026-10-22 |  |  |
| 13 | 2.1.3 | A.1 波峰焊治具 |  | 15d | 2026-09-15 | 2026-09-29 |  |  |
| 14 | 2.1.4 | A.2 PCB元器件避让 |  | 40d | 2026-09-06 | 2026-10-15 |  |  |
| 15 | 2.1.5 | A.2 建议减少PTH连接的铜面层数 |  | 40d | 2026-09-06 | 2026-10-15 |  |  |
| 16 | 2.1.6 | A 验证 |  | 1d | 2026-10-22 | 2026-10-22 |  | waiting |
| 17 | 2.2 | **Plan B: 回流焊验证** | fixed start | 52d | 2026-08-25 | 2026-10-15 |  |  |
| 18 | 2.2.1 | B.1 PCB/电解电容/DCmodule物资调拨 |  | 20d | 2026-08-25 | 2026-09-13 |  |  |
| 19 | 2.2.2 | B.1 扩大钢网开孔 |  | 15d | 2026-08-25 | 2026-09-08 |  |  |
| 20 | 2.2.3 | B.1 治具增加合成石挡块（3mm&5mm) |  | 20d | 2026-08-25 | 2026-09-13 |  |  |
| 21 | 2.2.4 | B.1 线体调配 |  | 1d | 2026-09-10 | 2026-09-10 |  |  |
| 22 | 2.2.5 | B.1 验证 |  | 2d | 2026-09-11 | 2026-09-12 |  | waiting |
| 23 | 2.2.6 | B.2 建议减少PTH连接的铜面层数 |  | 40d | 2026-09-06 | 2026-10-15 |  |  |
| 24 | 2.2.7 | B.2 建议缩短Pin长度 |  | 40d | 2026-08-25 | 2026-10-03 |  |  |
| 25 | 2.2.8 | B.2 线体调配 |  | 1d | 2026-10-04 | 2026-10-04 |  |  |
| 26 | 2.2.9 | B.2验证 |  | 1d | 2026-10-04 | 2026-10-04 |  | waiting |
| 27 | 2.3 | SIT Build |  | 1d | 2026-11-13 | 2026-11-13 | 100% | done |

Notes:
- 3: 无效果，锡在PTH孔外融化
- 4: 小锡炉放置区域无380V供电
- 6: 参数调整中
- 7: 6/60
- 11: 0/2
- 18: 0/2
